# WBS_ANKAR (1)

Schedule from MS Project, 2017-05-08 to 2017-08-11, costs in $, A marks actual dates.
Hewlett-Packard

## Calendars

- Estándar: Mon-Fri 09:00-13:00, 15:00-19:00; Sat-Sun off. Exceptions (off unless hours are given): 2017-05-15 (Día del maestro), 2017-06-19 (Día nacional del TSU), 2017-07-04 (Suspensión de labores), 2017-07-17 to 2017-07-28 (Vacaciones).

## Resources

| Resource | Rate | Cost per use |
| --- | --- | --- |
| Admin de proyecto_SBH | 114.28 |  |
| Admin de la configuración_SBH | 98.93 |  |
| Analista_SBH | 97.97 |  |
| Diseñador_LESV | 96.52 |  |
| Programador_LESV | 97.33 |  |
| Tester_LVA | 91.12 |  |
| Ing en V&V_LVA | 63 |  |
| Asegurador de la calidad_LVA | 62.05 |  |
| PC portátil HP1 |  | 10 |
| PC portátil HP2 |  | 10 |
| PC Portátil Acer |  | 10 |

## Schedule

| ID | WBS | Task | Duration | Start | Finish | Predecessors | Complete | Remaining | Total slack | Free slack | Resources | Work | Actual work | Cost | Actual cost |
| --- | --- | --- | --- | --- | --- | --- | --- | --- | --- | --- | --- | --- | --- | --- | --- |
| 1 | 1 | **1. Plan Preliminar** | 2d | 2017-05-08 09:00 A | 2017-05-09 19:00 |  | 99% | 0d |  |  | PC Portátil Acer; PC portátil HP1 | 80h | 48h | 4,260.06 | 4,240.06 |
| 2 | 1.1 | 1.1 Generar un WBS del Producto Inicial | 1d | 2017-05-08 09:00 A | 2017-05-08 19:00 A |  | 100% |  |  |  | Admin de la configuración_SBH; Asegurador de la calidad_LVA; Admin de proyecto_SBH | 24h | 24h | 2,202.08 | 2,202.08 |
| 3 | 1.2 | 1.2 Generar Project Charter | 0.3d | 2017-05-09 09:00 A | 2017-05-09 11:24 A | 2 | 100% |  |  |  | Admin de la configuración_SBH; Asegurador de la calidad_LVA; Admin de proyecto_SBH | 7.2h | 7.2h | 660.62 | 660.62 |
| 4 | 1.3 | 1.3 Plan de Proyecto Preliminar | 0.4d | 2017-05-09 11:24 A | 2017-05-09 16:36 A | 3 | 100% |  |  |  | Admin de la configuración_SBH; Asegurador de la calidad_LVA; Ing en V&V_LVA | 9.6h | 9.6h | 716.74 | 716.74 |
| 5 | 1.4 | 1.4 Generar Matriz de Responsabilidades | 0.3d | 2017-05-09 09:00 A | 2017-05-09 11:24 A | 2 | 100% |  |  |  | Admin de la configuración_SBH; Asegurador de la calidad_LVA; Admin de proyecto_SBH | 7.2h | 7.2h | 660.62 | 660.62 |
| 6 | 2 | **2. Sitio web ANKAR** | 55d | 2017-05-10 09:00 A | 2017-08-11 19:00 | 1 | 20% | 44.03d |  |  | PC Portátil Acer; PC portátil HP1; PC portátil HP2 | 1955.2h | 170.9h | 61,272.56 | 17,414.18 |
| 7 | 2.1 | 2.1 Formación del Equipo de Desarrollo | 0.1d | 2017-05-10 09:00 A | 2017-05-10 09:48 A |  | 100% |  |  |  | Admin de proyecto_SBH | 0.8h | 0.8h | 91.42 | 91.42 |
| 8 | 2.2 | **2.2 Especificación de Requerimientos** | 7d | 2017-05-10 09:00 A | 2017-05-19 19:00 |  | 72% | 1.98d |  |  |  | 85.2h | 50.4h | 8,652.74 | 5,169.29 |
| 9 | 2.2.1 | **2.2.1 Elicitación** | 3d | 2017-05-10 09:00 A | 2017-05-12 19:00 |  | 83% | 0.5d |  |  |  | 28h | 22h | 2,808.4 | 2,187.96 |
| 10 | 2.2.1.1 | 2.2.1.1 Generar listas de proveedores | 0.5d | 2017-05-10 09:00 A | 2017-05-10 13:00 |  | 50% | 0.25d | -7.4d | 0d | Analista_SBH; Admin de proyecto_SBH | 8h | 4h | 849 | 424.5 |
| 11 | 2.2.1.2 | 2.2.1.2 Evaluar los proveedores de requerimientos a entrevistar | 0.25d | 2017-05-10 15:00 A | 2017-05-10 17:00 | 10 | 50% | 0.12d | -7.65d | 0d | Analista_SBH | 2h | 1h | 195.94 | 97.97 |
| 12 | 2.2.1.3 | 2.2.1.3 Definir la estrategia de recolección de requerimientos | 0.25d | 2017-05-10 17:00 A | 2017-05-10 19:00 A | 11 | 100% |  |  |  | Analista_SBH | 2h | 2h | 195.94 | 195.94 |
| 13 | 2.2.1.4 | 2.2.1.4 Planificar reuniones de elicitación de requerimientos | 0.25d | 2017-05-11 09:00 A | 2017-05-11 11:00 | 12 | 50% | 0.12d | -8.15d | 0d | Analista_SBH | 2h | 1h | 195.94 | 97.97 |
| 14 | 2.2.1.5 | 2.2.1.5 Identificar los procesos del sistema | 1d | 2017-05-11 11:00 A | 2017-05-12 11:00 A | 13 | 100% |  |  |  | Analista_SBH | 8h | 8h | 783.76 | 783.76 |
| 15 | 2.2.1.6 | 2.2.1.6 Identificar los requerimientos funcionales | 0.5d | 2017-05-12 11:00 A | 2017-05-12 17:00 A | 14 | 100% |  |  |  | Analista_SBH | 4h | 4h | 391.88 | 391.88 |
| 16 | 2.2.1.7 | 2.2.1.7 Indenticiar los requerimientos no funcionales | 0.25d | 2017-05-12 17:00 A | 2017-05-12 19:00 A | 15 | 100% |  |  |  | Analista_SBH | 2h | 2h | 195.94 | 195.94 |
| 17 | 2.2.2 | **2.2.2 Especificación** | 1d | 2017-05-16 09:00 A | 2017-05-16 19:00 A | 9 | 100% |  |  |  |  | 11.2h | 11.2h | 1,149.46 | 1,149.46 |
| 18 | 2.2.2.1 | 2.2.2.1 Describir los requerimientos | 0.3d | 2017-05-16 09:00 A | 2017-05-16 11:24 A |  | 100% |  |  |  | Analista_SBH | 2.4h | 2.4h | 235.13 | 235.13 |
| 19 | 2.2.2.2 | 2.2.2.2 Evaluar los requerimientos | 0.3d | 2017-05-16 11:24 A | 2017-05-16 15:48 A | 18 | 100% |  |  |  | Analista_SBH | 2.4h | 2.4h | 235.13 | 235.13 |
| 20 | 2.2.2.3 | 2.2.2.3 SRS | 0.4d | 2017-05-16 15:48 A | 2017-05-16 19:00 A | 19 | 100% |  |  |  | Admin de proyecto_SBH; Analista_SBH | 6.4h | 6.4h | 679.2 | 679.2 |
| 21 | 2.2.3 | **2.2.3 Gestión** | 2.5d | 2017-05-17 09:00 A | 2017-05-19 13:00 | 17 | 61% | 0.97d |  |  |  | 32h | 17.2h | 3,396 | 1,831.87 |
| 22 | 2.2.3.1 | 2.2.3.1 Prioizar requerimientos | 0.5d | 2017-05-17 09:00 A | 2017-05-17 13:00 |  | 80% | 0.1d | -11.4d | 0d | Analista_SBH | 4h | 3.2h | 391.88 | 313.5 |
| 23 | 2.2.3.2 | 2.2.3.2 Almacenar en repositorio | 0.25d | 2017-05-17 15:00 A | 2017-05-17 17:00 | 22 | 50% | 0.12d | -11.65d | 0d | Admin de proyecto_SBH; Analista_SBH | 4h | 2h | 424.5 | 212.25 |
| 24 | 2.2.3.3 | 2.2.3.3 Asigar a desarrolladores de software | 0.5d | 2017-05-17 17:00 A | 2017-05-18 11:00 A | 23 | 100% |  |  |  | Admin de proyecto_SBH | 4h | 4h | 457.12 | 457.12 |
| 25 | 2.2.3.4 | 2.2.3.4 Administrar los cambios en los requerimientos | 0.5d | 2017-05-18 11:00 A | 2017-05-18 17:00 A | 24 | 100% |  |  |  | Admin de proyecto_SBH; Analista_SBH | 8h | 8h | 849 | 849 |
| 26 | 2.2.3.5 | 2.2.3.5 Administrar la trazabilidad de los requerimientos | 0.75d | 2017-05-18 17:00 | 2017-05-19 13:00 | 25 |  |  | -13.9d | 0d | Admin de proyecto_SBH; Analista_SBH | 12h |  | 1,273.5 |  |
| 27 | 2.2.4 | 2.2.4 Calificar V & V de requerimientos | 0.25d | 2017-05-19 15:00 | 2017-05-19 17:00 | 26 |  |  | -13.9d | 0d | Admin de la configuración_SBH; Admin de proyecto_SBH; Analista_SBH; Ing en V&V_LVA | 8h |  | 748.36 |  |
| 28 | 2.2.5 | 2.2.5 Hitos de especificación de requerimientos | 0.25d | 2017-05-19 17:00 | 2017-05-19 19:00 | 27 |  |  | -16.9d | 0d | Admin de la configuración_SBH; Admin de proyecto_SBH; Asegurador de la calidad_LVA | 6h |  | 550.52 |  |

| ID | WBS | Task | Duration | Start | Finish | Predecessors | Complete | Remaining | Total slack | Free slack | Constraint | Resources | Work | Actual work | Cost | Actual cost |
| --- | --- | --- | --- | --- | --- | --- | --- | --- | --- | --- | --- | --- | --- | --- | --- | --- |
| 29 | 2.3 | **2.3 Planificación** | 11d | 2017-05-22 09:00 A | 2017-06-05 19:00 | 8 | 70% | 3.34d |  |  |  |  | 196h | 119.7h | 19,169.06 | 12,153.47 |
| 30 | 2.3.1 | 2.3.1 Definición del ciclo de vida | 0.25d | 2017-05-22 09:00 A | 2017-05-22 11:00 A |  | 100% |  |  |  |  | Admin de proyecto_SBH; Analista_SBH | 4h | 4h | 424.5 | 424.5 |
| 31 | 2.3.2 | 2.3.2 Politicas del proyecto | 0.75d | 2017-05-22 09:00 A | 2017-05-22 17:00 |  | 60% | 0.3d | 10.25d |  |  | Admin de la configuración_SBH; Admin de proyecto_SBH; Asegurador de la calidad_LVA | 18h | 10.8h | 1,651.56 | 990.94 |
| 32 | 2.3.3 | 2.3.3 Actualizar plan de proyecto | 2d | 2017-05-23 09:00 A | 2017-05-24 19:00 |  | 80% | 0.4d | 45d |  | start no earlier than 2017-05-23 09:00 | Admin de proyecto_SBH; Admin de la configuración_SBH; Asegurador de la calidad_LVA | 48h | 38.4h | 4,404.16 | 3,523.33 |
| 33 | 2.3.4 | **2.3.4 Estimación** | 3d | 2017-05-25 09:00 A | 2017-05-29 19:00 |  | 97% | 0.09d |  |  |  |  | 34h | 33.3h | 3,722.42 | 3,642.42 |
| 34 | 2.3.4.1 | 2.3.4.1 Actualizar WBS/Calendario | 0.5d | 2017-05-25 09:00 A | 2017-05-25 13:00 |  | 95% | 0.03d | 2.5d |  |  | Admin de proyecto_SBH | 4h | 3.8h | 457.12 | 434.26 |
| 35 | 2.3.4.2 | 2.3.4.2 Diccionario del WBS | 1.25d | 2017-05-25 09:00 A | 2017-05-26 11:00 |  | 95% | 0.06d | 1.75d |  |  | Admin de proyecto_SBH | 10h | 9.5h | 1,142.8 | 1,085.66 |
| 36 | 2.3.4.3 | 2.3.4.5 Costos | 1.25d | 2017-05-26 11:00 A | 2017-05-29 13:00 A | 35 | 100% |  |  |  |  | Admin de proyecto_SBH; Analista_SBH | 20h | 20h | 2,122.5 | 2,122.5 |
| 37 | 2.3.5 | **2.3.5 Riesgos** | 2.5d | 2017-05-30 09:00 A | 2017-06-01 13:00 | 33 | 98% | 0.05d |  |  |  |  | 34h | 33.2h | 3,657.18 | 3,572.28 |
| 38 | 2.3.5.1 | 2.3.5.1 Identificación de riesgos | 0.75d | 2017-05-30 09:00 A | 2017-05-30 17:00 A |  | 100% |  |  |  |  | Admin de proyecto_SBH; Analista_SBH | 12h | 12h | 1,273.5 | 1,273.5 |
| 39 | 2.3.5.2 | 2.3.5.2 Asignación de prioridades | 0.75d | 2017-05-30 09:00 A | 2017-05-30 17:00 A |  | 100% |  |  |  |  | Admin de proyecto_SBH | 6h | 6h | 685.68 | 685.68 |
| 40 | 2.3.5.3 | 2.3.5.3 Plan de mitigación y contingencia | 1d | 2017-05-31 09:00 A | 2017-05-31 19:00 |  | 95% | 0.05d | 40d |  | start no earlier than 2017-05-31 09:00 | Admin de proyecto_SBH; Analista_SBH | 16h | 15.2h | 1,698 | 1,613.1 |
| 41 | 2.3.6 | **2.3.6 Aseguramientos de la calidad** | 2.25d | 2017-06-01 09:00 | 2017-06-05 11:00 |  |  |  |  |  |  |  | 50h |  | 4,632.72 |  |
| 42 | 2.3.6.1 | 2.3.6.1 Plan de la gestion de la configuración | 2d | 2017-06-01 09:00 | 2017-06-02 19:00 |  |  |  | -24.15d | 0d |  | Admin de la configuración_SBH; Admin de proyecto_SBH; Asegurador de la calidad_LVA | 48h |  | 4,404.16 |  |
| 43 | 2.3.6.2 | 2.3.6.2 Junta de arranque de construcción | 0.25d | 2017-06-05 09:00 | 2017-06-05 11:00 | 42 |  |  | -24.15d | 0d |  | Admin de proyecto_SBH | 2h |  | 228.56 |  |
| 44 | 2.3.7 | 2.3.7 Hitos de especificación de requerimientos | 0.25d | 2017-06-05 11:00 | 2017-06-05 13:00 | 43 |  |  | -24.15d | 0d |  | Admin de la configuración_SBH; Admin de proyecto_SBH; Asegurador de la calidad_LVA; Ing en V&V_LVA | 8h |  | 676.52 |  |
| 45 | 2.4 | **2.4 Diseño Preliminar** | 14d | 2017-06-06 09:00 | 2017-06-26 19:00 | 29 |  |  |  |  |  |  | 134h |  | 12,609.6 |  |
| 46 | 2.4.1 | 2.4.1 Definición de la arquitectura | 0.25d | 2017-06-06 09:00 | 2017-06-06 11:00 |  |  |  | -15.9d | 0d |  | Diseñador_LESV; Admin de proyecto_SBH | 4h |  | 421.6 |  |
| 47 | 2.4.2 | **2.4.2 Diagramas UML** | 8d | 2017-06-06 09:00 | 2017-06-15 19:00 |  |  |  |  |  |  |  | 40h |  | 3,860.8 |  |
| 48 | 2.4.2.1 | 2.4.2.1 Diagrama de secuencia | 2d | 2017-06-06 09:00 | 2017-06-07 19:00 |  |  |  | -24.65d | 0d |  | Diseñador_LESV | 16h |  | 1,544.32 |  |
| 49 | 2.4.2.2 | 2.4.2.2 Diagrama de clases | 2d | 2017-06-08 09:00 | 2017-06-09 19:00 | 48 |  |  | -24.65d | 0d |  | Diseñador_LESV | 16h |  | 1,544.32 |  |
| 50 | 2.4.2.3 | 2.4.2.3 Diagrama de componentes | 0.5d | 2017-06-12 09:00 | 2017-06-12 13:00 | 49 |  |  | -24.65d | 0d |  | Diseñador_LESV | 4h |  | 386.08 |  |
| 51 | 2.4.2.4 | 2.4.2.4 Diagrama de despliegue | 0.5d | 2017-06-12 09:00 | 2017-06-12 13:00 |  |  |  | 32.5d |  | start no earlier than 2017-06-12 09:00 | Diseñador_LESV | 4h |  | 386.08 |  |
| 52 | 2.4.3 | 2.4.3 Mapa de navegación | 0.25d | 2017-06-13 09:00 | 2017-06-13 11:00 |  |  |  | 31.75d |  | start no earlier than 2017-06-13 09:00 | Diseñador_LESV | 2h |  | 193.04 |  |
| 53 | 2.4.4 | 2.4.4 Maquetación /Bocetos | 2.75d | 2017-06-13 09:00 | 2017-06-15 17:00 |  |  |  | 29.25d |  | start no earlier than 2017-06-13 09:00 | Diseñador_LESV | 22h |  | 2,123.44 |  |

| ID | WBS | Task | Duration | Start | Finish | Predecessors | Total slack | Free slack | Constraint | Resources | Work | Cost |
| --- | --- | --- | --- | --- | --- | --- | --- | --- | --- | --- | --- | --- |
| 54 | 2.4.5 | **2.4.5 Base de datos** | 5d | 2017-06-16 09:00 | 2017-06-23 19:00 | 47 |  |  |  |  | 48h | 4,432.04 |
| 55 | 2.4.5.1 | 2.4.5.1 Diagrama E-R | 2d | 2017-06-16 09:00 | 2017-06-20 19:00 |  | -28.15d | 0d |  | Diseñador_LESV | 16h | 1,544.32 |
| 56 | 2.4.5.2 | 2.4.5.2 Diagrama relacional | 2d | 2017-06-21 09:00 | 2017-06-22 19:00 | 55 | -28.15d | 0d |  | Diseñador_LESV | 16h | 1,544.32 |
| 57 | 2.4.5.3 | 2.4.5.3 Diccionario de datos | 0.5d | 2017-06-23 09:00 | 2017-06-23 13:00 | 56 | -28.15d | 0d |  | Diseñador_LESV | 4h | 386.08 |
| 58 | 2.4.5.4 | 2.4.5.4 Verificación | 0.5d | 2017-06-23 09:00 | 2017-06-23 13:00 |  | 24.5d |  | start no earlier than 2017-06-23 09:00 | Admin de proyecto_SBH; Asegurador de la calidad_LVA; Ing en V&V_LVA | 12h | 957.32 |
| 59 | 2.4.6 | 2.4.6 Integracion de V&V | 0.5d | 2017-06-26 09:00 | 2017-06-26 13:00 |  | 23.5d |  | start no earlier than 2017-06-26 09:00 | Admin de proyecto_SBH; Ing en V&V_LVA | 8h | 709.12 |
| 60 | 2.4.7 | 2.4.7 Hitos del diseño peliminar | 0.25d | 2017-06-26 09:00 | 2017-06-26 11:00 |  | 23.75d |  | start no earlier than 2017-06-26 09:00 | Admin de proyecto_SBH; Diseñador_LESV; Ing en V&V_LVA; Admin de la configuración_SBH; Asegurador de la calidad_LVA | 10h | 869.56 |
| 61 | 2.5 | **2.5 Diseño detallado** | 3d | 2017-06-27 09:00 | 2017-06-29 19:00 | 45 |  |  |  |  | 32h | 2,960.6 |
| 62 | 2.5.1 | 2.5.1 Refinamiento del diseño | 2d | 2017-06-27 09:00 | 2017-06-28 19:00 |  | -29.65d | 0d |  | Diseñador_LESV | 16h | 1,544.32 |
| 63 | 2.5.2 | 2.5.2 Pruebas unitarias o de unidad | 0.75d | 2017-06-29 09:00 | 2017-06-29 17:00 | 62 | -29.65d | 0d |  | Tester_LVA | 6h | 546.72 |
| 64 | 2.5.3 | 2.5.3 Hitos del diseño detallado | 0.25d | 2017-06-29 09:00 | 2017-06-29 11:00 |  | 20.75d |  | start no earlier than 2017-06-29 09:00 | Diseñador_LESV; Admin de la configuración_SBH; Admin de proyecto_SBH; Asegurador de la calidad_LVA; Ing en V&V_LVA | 10h | 869.56 |
| 65 | 2.6 | **2.6 Codificación** | 15d | 2017-06-30 09:00 | 2017-08-04 19:00 | 61 |  |  |  |  | 120h | 11,577.48 |
| 66 | 2.6.1 | 2.6.1 Codificación de la base de datos | 1.75d | 2017-06-30 09:00 | 2017-07-03 17:00 |  | -29.9d | 0d |  | Programador_LESV | 14h | 1,362.62 |
| 67 | 2.6.2 | **2.6.2 Codificar FrontEnd** | 4d | 2017-07-05 09:00 | 2017-07-10 19:00 | 66 |  |  |  |  | 32h | 3,114.56 |
| 68 | 2.6.2.1 | **2.6.2.1 Pantalla de inicio** | 0.25d | 2017-07-05 09:00 | 2017-07-05 11:00 |  |  |  |  |  | 2h | 194.66 |
| 69 | 2.6.2.1.1 | 2.6.2.1.1 Vista/Interfaz | 0.25d | 2017-07-05 09:00 | 2017-07-05 11:00 |  | -29.4d | 0d |  | Programador_LESV | 2h | 194.66 |
| 70 | 2.6.2.2 | **2.6.2.2 Pantalla de conócenos** | 0.25d | 2017-07-05 09:00 | 2017-07-05 11:00 |  | -29.4d | 0d |  |  | 2h | 194.66 |
| 71 | 2.6.2.2.1 | 2.6.2.2.1 Vista/Interfaz | 0.25d | 2017-07-05 09:00 | 2017-07-05 11:00 |  | -29.4d | 0d |  | Programador_LESV | 2h | 194.66 |
| 72 | 2.6.2.3 | **2.6.2.3 Pantalla de novedades** | 0.5d | 2017-07-05 09:00 | 2017-07-05 13:00 |  | -29.65d | 0d |  |  | 4h | 389.32 |
| 73 | 2.6.2.3.1 | 2.6.2.3.1 Vista/Interfaz | 0.5d | 2017-07-05 09:00 | 2017-07-05 13:00 |  | -29.65d | 0d |  | Programador_LESV | 4h | 389.32 |
| 74 | 2.6.2.4 | **2.6.2.4 Pantalla de productos** | 1d | 2017-07-06 09:00 | 2017-07-06 19:00 |  | -31.15d | 0d |  |  | 8h | 778.64 |
| 75 | 2.6.2.4.1 | 2.6.2.4.1 Vista/Interfaz | 1d | 2017-07-06 09:00 | 2017-07-06 19:00 |  | -31.15d | 0d | start no earlier than 2017-07-06 09:00 | Programador_LESV | 8h | 778.64 |
| 76 | 2.6.2.5 | **2.6.2.5 Pantalla de login** | 0.25d | 2017-07-07 09:00 | 2017-07-07 11:00 |  | -31.4d | 0d |  |  | 2h | 194.66 |
| 77 | 2.6.2.5.1 | 2.6.2.5.1 Vista/Interfaz | 0.25d | 2017-07-07 09:00 | 2017-07-07 11:00 |  | -31.4d | 0d | start no earlier than 2017-07-07 09:00 | Programador_LESV | 2h | 194.66 |

| ID | WBS | Task | Duration | Start | Finish | Predecessors | Total slack | Free slack | Constraint | Resources | Work | Cost |
| --- | --- | --- | --- | --- | --- | --- | --- | --- | --- | --- | --- | --- |
| 78 | 2.6.2.6 | **2.6.2.6 Pantalla de carrito de compras** | 1d | 2017-07-07 09:00 | 2017-07-07 19:00 |  | -32.15d | 0d |  |  | 8h | 778.64 |
| 79 | 2.6.2.6.1 | 2.6.2.6.1 Vista/Interfaz | 1d | 2017-07-07 09:00 | 2017-07-07 19:00 |  | -32.15d | 0d | start no earlier than 2017-07-07 09:00 | Programador_LESV | 8h | 778.64 |
| 80 | 2.6.2.7 | **2.6.2.7 Pantalla de comentarios** | 0.5d | 2017-07-10 09:00 | 2017-07-10 13:00 |  | -32.65d | 0d |  |  | 4h | 389.32 |
| 81 | 2.6.2.7.1 | 2.6.2.7.1 Vista/Interfaz | 0.5d | 2017-07-10 09:00 | 2017-07-10 13:00 |  | -32.65d | 0d | start no earlier than 2017-07-10 09:00 | Programador_LESV | 4h | 389.32 |
| 82 | 2.6.2.8 | **2.6.2.8 Pantalla de FAQ** | 0.25d | 2017-07-10 09:00 | 2017-07-10 11:00 |  | -32.4d | 0d |  |  | 2h | 194.66 |
| 83 | 2.6.2.8.1 | 2.6.2.8.1 Vista/Interfaz | 0.25d | 2017-07-10 09:00 | 2017-07-10 11:00 |  | -32.4d | 0d | start no earlier than 2017-07-10 09:00 | Programador_LESV | 2h | 194.66 |
| 84 | 2.6.3 | **2.6.3 Codificar BackEnd (Cpanel)** | 8d | 2017-07-11 09:00 | 2017-08-03 19:00 | 67 |  |  |  |  | 64h | 6,229.12 |
| 85 | 2.6.3.1 | **2.6.3.1 Módulo de usuarios** | 2d | 2017-07-11 09:00 | 2017-07-12 19:00 |  |  |  |  |  | 16h | 1,557.28 |
| 86 | 2.6.3.1.1 | 2.6.3.1.1 Clases de usuario | 1d | 2017-07-11 09:00 | 2017-07-11 19:00 |  | 4d | 0d |  | Programador_LESV | 8h | 778.64 |
| 87 | 2.6.3.1.2 | 2.6.3.1.2 Controlador | 0.75d | 2017-07-12 09:00 | 2017-07-12 17:00 | 86 | 4d | 0d |  | Programador_LESV | 6h | 583.98 |
| 88 | 2.6.3.1.3 | 2.6.3.1.3 Vista/Interfaz | 0.25d | 2017-07-12 17:00 | 2017-07-12 19:00 | 87 | 4d |  |  | Programador_LESV | 2h | 194.66 |
| 89 | 2.6.3.2 | **2.6.3.2 Módulo de novedades** | 1d | 2017-07-13 09:00 | 2017-07-13 19:00 |  |  |  |  |  | 8h | 778.64 |
| 90 | 2.6.3.2.1 | 2.6.3.2.1 Clases de novedades | 0.5d | 2017-07-13 09:00 | 2017-07-13 13:00 |  | 7d | 0d |  | Programador_LESV | 4h | 389.32 |
| 91 | 2.6.3.2.2 | 2.6.3.2.2 Controlador | 0.25d | 2017-07-13 15:00 | 2017-07-13 17:00 | 90 | 7d | 0d |  | Programador_LESV | 2h | 194.66 |
| 92 | 2.6.3.2.3 | 2.6.3.2.3 Vista/Interfaz | 0.25d | 2017-07-13 17:00 | 2017-07-13 19:00 | 91 | 7d |  |  | Programador_LESV | 2h | 194.66 |
| 93 | 2.6.3.3 | **2.6.3.3 Módulo de productos** | 3d | 2017-07-14 09:00 | 2017-08-01 19:00 | 85 |  |  |  |  | 24h | 2,335.92 |
| 94 | 2.6.3.3.1 | 2.6.3.3.1 Clases de producto | 1d | 2017-07-14 09:00 | 2017-07-14 19:00 |  | 3d | 0d |  | Programador_LESV | 8h | 778.64 |
| 95 | 2.6.3.3.2 | 2.6.3.3.2 Controlador | 1d | 2017-07-31 09:00 | 2017-07-31 19:00 | 94 | 3d | 0d |  | Programador_LESV | 8h | 778.64 |
| 96 | 2.6.3.3.3 | 2.6.3.3.3 Vista/Interfaz | 0.25d | 2017-08-01 09:00 | 2017-08-01 11:00 | 95 | 3d | 0d |  | Programador_LESV | 2h | 194.66 |
| 97 | 2.6.3.3.4 | 2.6.3.3.4 Reporte | 0.75d | 2017-08-01 11:00 | 2017-08-01 19:00 | 96 | 3d |  |  | Programador_LESV | 6h | 583.98 |
| 98 | 2.6.3.4 | **2.6.3.4 Módulo de compras** | 1d | 2017-08-02 09:00 | 2017-08-02 19:00 | 93 |  |  |  |  | 8h | 778.64 |
| 99 | 2.6.3.4.1 | 2.6.3.4.1 Controlador | 0.75d | 2017-08-02 09:00 | 2017-08-02 17:00 |  | 3d | 0d |  | Programador_LESV | 6h | 583.98 |
| 100 | 2.6.3.4.2 | 2.6.3.4.2 Vista/Interfaz | 0.25d | 2017-08-02 17:00 | 2017-08-02 19:00 | 99 | 3d |  |  | Programador_LESV | 2h | 194.66 |
| 101 | 2.6.3.5 | **2.6.3.5 Módulo de comentarios** | 0.5d | 2017-08-03 09:00 | 2017-08-03 13:00 |  |  |  |  |  | 4h | 389.32 |
| 102 | 2.6.3.5.1 | 2.6.3.5.1 Contrlador | 0.25d | 2017-08-03 09:00 | 2017-08-03 11:00 |  | 2.5d | 0d |  | Programador_LESV | 2h | 194.66 |
| 103 | 2.6.3.5.2 | 2.6.3.5.2 Vista/Interfaz | 0.25d | 2017-08-03 11:00 | 2017-08-03 13:00 | 102 | 2.5d |  |  | Programador_LESV | 2h | 194.66 |

| ID | WBS | Task | Duration | Start | Finish | Predecessors | Total slack | Free slack | Resources | Work | Cost |
| --- | --- | --- | --- | --- | --- | --- | --- | --- | --- | --- | --- |
| 104 | 2.6.3.6 | **2.6.3.6 Módulo de FAQ** | 0.5d | 2017-08-03 09:00 | 2017-08-03 13:00 |  |  |  |  | 4h | 389.32 |
| 105 | 2.6.3.6.1 | 2.6.3.6.1 Controlador | 0.25d | 2017-08-03 09:00 | 2017-08-03 11:00 |  | -40.15d | 0d | Programador_LESV | 2h | 194.66 |
| 106 | 2.6.3.6.2 | 2.6.3.6.2 Vista/Interfaz | 0.25d | 2017-08-03 11:00 | 2017-08-03 13:00 | 105 | -40.15d | 0d | Programador_LESV | 2h | 194.66 |
| 107 | 2.6.4 | 2.6.4 Hitos de codificación | 0.25d | 2017-08-03 15:00 | 2017-08-03 17:00 | 106 | -40.15d | 0d | Programador_LESV; Admin de la configuración_SBH; Admin de proyecto_SBH; Asegurador de la calidad_LVA; Ing en V&V_LVA | 10h | 871.18 |
| 108 | 2.7 | **2.7 Pruebas** | 1d | 2017-08-08 09:00 | 2017-08-08 19:00 | 65 |  |  |  | 11.2h | 999.57 |
| 109 | 2.7.1 | **2.7.1 Caja blanca** | 1d | 2017-08-08 09:00 | 2017-08-08 19:00 |  |  |  |  | 7.2h | 656.06 |
| 110 | 2.7.1.1 | **2.7.1.1 Módulo de usuarios** | 0.2d | 2017-08-08 09:00 | 2017-08-08 10:36 |  |  |  |  | 1.6h | 145.79 |
| 111 | 2.7.1.1.1 | 2.7.1.1.1 Pruebas unitarias | 0.1d | 2017-08-08 09:00 | 2017-08-08 09:48 |  | 0.8d | 0d | Tester_LVA | 0.8h | 72.9 |
| 112 | 2.7.1.1.2 | 2.7.1.1.2 Pruebas de módulo | 0.1d | 2017-08-08 09:48 | 2017-08-08 10:36 | 111 | 0.8d |  | Tester_LVA | 0.8h | 72.9 |
| 113 | 2.7.1.2 | **2.7.1.2 Módulo de novedades** | 0.1d | 2017-08-08 09:00 | 2017-08-08 09:48 |  |  |  |  | 0.8h | 72.9 |
| 114 | 2.7.1.2.1 | 2.7.1.2.1 Pruebas unitarias | 0.05d | 2017-08-08 09:00 | 2017-08-08 09:24 |  | 0.9d | 0d | Tester_LVA | 0.4h | 36.45 |
| 115 | 2.7.1.2.2 | 2.7.1.2.2 Pruebas de módulo | 0.05d | 2017-08-08 09:24 | 2017-08-08 09:48 | 114 | 0.9d |  | Tester_LVA | 0.4h | 36.45 |
| 116 | 2.7.1.3 | **2.7.1.3 Módulo de productos** | 0.3d | 2017-08-08 09:00 | 2017-08-08 11:24 |  |  |  |  | 2.4h | 218.69 |
| 117 | 2.7.1.3.1 | 2.7.1.3.1 Pruebas unitarias | 0.15d | 2017-08-08 09:00 | 2017-08-08 10:12 |  | 0.7d | 0d | Tester_LVA | 1.2h | 109.34 |
| 118 | 2.7.1.3.2 | 2.7.1.3.2 Pruebas de moduo | 0.15d | 2017-08-08 10:12 | 2017-08-08 11:24 | 117 | 0.7d |  | Tester_LVA | 1.2h | 109.34 |
| 119 | 2.7.1.4 | **2.7.1.4 Módulo de compras** | 0.3d | 2017-08-08 09:00 | 2017-08-08 11:24 |  |  |  |  | 2.4h | 218.69 |
| 120 | 2.7.1.4.1 | 2.7.1.4.1 Pruebas unitarias | 0.15d | 2017-08-08 09:00 | 2017-08-08 10:12 |  | -42.4d | 0d | Tester_LVA | 1.2h | 109.34 |
| 121 | 2.7.1.4.2 | 2.7.1.4.2 Pruebas de módulo | 0.15d | 2017-08-08 10:12 | 2017-08-08 11:24 | 120 | -42.4d | 0d | Tester_LVA | 1.2h | 109.34 |
| 122 | 2.7.2 | 2.7.2 Hitos de pruebas | 0.1d | 2017-08-08 11:24 | 2017-08-08 12:12 | 121 | -42.4d | 0d | Tester_LVA; Admin de la configuración_SBH; Admin de proyecto_SBH; Asegurador de la calidad_LVA; Ing en V&V_LVA | 4h | 343.5 |
| 123 | 2.8 | **2.8 Intregración** | 1d | 2017-08-09 09:00 | 2017-08-09 19:00 | 108 |  |  |  | 32h | 2,860.64 |
| 124 | 2.8.1 | 2.8.1 Pruebas de integración | 0.5d | 2017-08-09 09:00 | 2017-08-09 13:00 |  | -43d | 0d | Programador_LESV; Tester_LVA | 8h | 753.8 |
| 125 | 2.8.2 | 2.8.2 Hitos de Integración | 0.5d | 2017-08-09 15:00 | 2017-08-09 19:00 | 124 | -43d | 0d | Programador_LESV; Tester_LVA; Admin de la configuración_SBH; Admin de proyecto_SBH; Asegurador de la calidad_LVA; Ing en V&V_LVA | 24h | 2,106.84 |
| 126 | 2.9 | **2.9 Implementación** | 1d | 2017-08-10 09:00 | 2017-08-10 19:00 | 123 |  |  |  | 12.8h | 1,149.64 |
| 127 | 2.9.1 | 2.9.1 Lista de hosting | 0.1d | 2017-08-10 09:00 | 2017-08-10 09:48 |  | -43d | 0d | Diseñador_LESV | 0.8h | 77.22 |
| 128 | 2.9.2 | 2.9.2 Evalucación de hosting | 0.1d | 2017-08-10 09:48 | 2017-08-10 10:36 | 127 | -43d | 0d | Admin de proyecto_SBH | 0.8h | 91.42 |
| 129 | 2.9.3 | 2.9.3 Montar el sitio en el hosting | 0.3d | 2017-08-10 10:36 | 2017-08-10 13:00 | 128 | -43d | 0d | Programador_LESV | 2.4h | 233.59 |
| 130 | 2.9.4 | 2.9.4 Pruebas de sistema | 0.3d | 2017-08-10 15:00 | 2017-08-10 17:24 | 129 | -43d | 0d | Tester_LVA | 2.4h | 218.69 |
| 131 | 2.9.5 | 2.9.5 Hitos de la implementación | 0.2d | 2017-08-10 17:24 | 2017-08-10 19:00 | 130 | -43d | 0d | Admin de proyecto_SBH; Asegurador de la calidad_LVA; Ing en V&V_LVA; Tester_LVA | 6.4h | 528.72 |

| ID | WBS | Task | Type | Duration | Start | Finish | Predecessors | Total slack | Free slack | Constraint | Resources | Work | Cost |
| --- | --- | --- | --- | --- | --- | --- | --- | --- | --- | --- | --- | --- | --- |
| 132 | 2.10 | **2.10 Cierre del proyecto** |  | 1d | 2017-08-11 09:00 | 2017-08-11 19:00 | 126 |  |  |  |  | 11.2h | 1,171.81 |
| 133 | 2.10.1 | 2.10.1 Carta de aceptación |  | 0.1d | 2017-08-11 09:00 | 2017-08-11 09:48 |  | 0.2d | 0d |  | Admin de la configuración_SBH; Admin de proyecto_SBH; Asegurador de la calidad_LVA | 2.4h | 220.21 |
| 134 | 2.10.2 | 2.10.2 Acta de cierre de proyecto |  | 0.1d | 2017-08-11 09:48 | 2017-08-11 10:36 | 133 | 0.2d | 0d |  | Admin de la configuración_SBH; Admin de proyecto_SBH; Asegurador de la calidad_LVA | 2.4h | 220.21 |
| 135 | 2.10.3 | 2.10.3 Evaluación de desempeño |  | 0.3d | 2017-08-11 10:36 | 2017-08-11 13:00 | 134 | 0.2d | 0d |  | Admin de proyecto_SBH | 2.4h | 274.27 |
| 136 | 2.10.4 | 2.10.4 Junta de lecciones aprendidas |  | 0.2d | 2017-08-11 15:00 | 2017-08-11 16:36 | 135 | 0.2d | 0d |  | Admin de proyecto_SBH | 1.6h | 182.85 |
| 137 | 2.10.5 | 2.10.5 Revisión de adeherencias |  | 0.1d | 2017-08-11 16:36 | 2017-08-11 17:24 | 136 | 0.2d |  |  | Admin de proyecto_SBH | 0.8h | 91.42 |
| 138 | 2.10.6 | 2.10.6 Liberación de recursos |  | 0.1d | 2017-08-11 09:00 | 2017-08-11 09:48 |  | 0.8d | 0d |  | Admin de proyecto_SBH | 0.8h | 91.42 |
| 139 | 2.10.7 | **2.10.7 Informa final de (Cierre)** |  | 0.1d | 2017-08-11 09:48 | 2017-08-11 10:36 | 138 | 0.8d |  |  | Admin de proyecto_SBH | 0.8h | 91.42 |
| 143 | 2.10.7.1 | 1 | manual | 1d | 2017-05-26 09:00 | 2017-05-26 19:00 |  |  |  | start no earlier than 2017-05-26 09:00 |  |  |  |
| 144 | 2.10.7.2 | 2 | manual | 1d | 2017-06-02 09:00 | 2017-06-02 19:00 |  |  |  | start no earlier than 2017-06-02 09:00 |  |  |  |
| 145 | 2.10.7.3 | 3 | manual | 1d | 2017-06-09 09:00 | 2017-06-09 19:00 |  |  |  | start no earlier than 2017-06-09 09:00 |  |  |  |
| 146 | 2.10.7.4 | 4 | manual | 1d | 2017-06-16 09:00 | 2017-06-16 19:00 |  |  |  | start no earlier than 2017-06-16 09:00 |  |  |  |
| 147 | 2.10.7.5 | 5 | manual | 1d | 2017-06-23 09:00 | 2017-06-23 19:00 |  |  |  | start no earlier than 2017-06-23 09:00 |  |  |  |
| 148 | 2.10.7.6 | 6 | manual | 1d | 2017-06-30 09:00 | 2017-06-30 19:00 |  |  |  | start no earlier than 2017-06-30 09:00 |  |  |  |
| 149 | 2.10.7.7 | 7 | manual | 1d | 2017-07-07 09:00 | 2017-07-07 19:00 |  |  |  | start no earlier than 2017-07-07 09:00 |  |  |  |
| 150 | 2.10.7.8 | 8 | manual | 1d | 2017-07-14 09:00 | 2017-07-14 19:00 |  |  |  | start no earlier than 2017-07-14 09:00 |  |  |  |
| 151 | 2.10.7.9 | 9 | manual | 1d | 2017-07-21 09:00 | 2017-07-21 19:00 |  |  |  | start no earlier than 2017-07-21 09:00 |  |  |  |
| 152 | 2.10.7.10 | 10 | manual | 1d | 2017-07-28 09:00 | 2017-07-28 19:00 |  |  |  | start no earlier than 2017-07-28 09:00 |  |  |  |
| 153 | 2.10.7.11 | 11 | manual | 1d | 2017-08-04 09:00 | 2017-08-04 19:00 |  |  |  | start no earlier than 2017-08-04 09:00 |  |  |  |
